# 6-软件开发-资源+WBS+工作分配+工期+依赖+基线

Schedule from MS Project, 2015-11-16 to 2016-03-28, costs in ￥.

## Calendars

- 标准: Mon-Fri 08:00-12:00, 13:00-17:00; Sat-Sun off.

## Resources

| Resource | Rate |
| --- | --- |
| 管理人员 | 100 |
| 项目经理 | 100 |
| 分析人员 | 80 |
| 开发人员 | 80 |
| 测试人员 | 70 |
| 讲师 | 80 |
| 技术联络人员 | 60 |
| 部署小组 | 60 |

## Schedule

| ID | WBS | Task | Type | Duration | Start | Finish | Predecessors | Baseline start | Baseline finish | Baseline duration | Total slack | Resources | Work | Cost | Baseline cost |
| --- | --- | --- | --- | --- | --- | --- | --- | --- | --- | --- | --- | --- | --- | --- | --- |
| 1 | 1 | **项目范围规划** |  | 3.5d | 2015-11-16 | 2015-11-19 |  | 2015-11-16 | 2015-11-19 | 3.5d | 0d |  | 28h | 2,800 | 2,800 |
| 2 | 1.1 | 确定项目范围 |  | 4h | 2015-11-16 | 2015-11-16 |  | 2015-11-16 | 2015-11-16 | 4h | 0d | 管理人员 | 4h | 400 | 400 |
| 3 | 1.2 | 获得项目所需资金 |  | 1d | 2015-11-16 | 2015-11-17 | 2 | 2015-11-16 | 2015-11-17 | 1d | 0d | 管理人员 | 8h | 800 | 800 |
| 4 | 1.3 | 定义预备资源 |  | 1d | 2015-11-17 | 2015-11-18 | 3 | 2015-11-17 | 2015-11-18 | 1d | 0d | 项目经理 | 8h | 800 | 800 |
| 5 | 1.4 | 获得核心资源 |  | 1d | 2015-11-18 | 2015-11-19 | 4 | 2015-11-18 | 2015-11-19 | 1d | 0d | 项目经理 | 8h | 800 | 800 |
| 6 | 1.5 | 完成项目范围规划 | milestone | 0d | 2015-11-19 | 2015-11-19 | 5 | 2015-11-19 | 2015-11-19 | 0d | 0d |  |  |  |  |
| 7 | 2 | **分析/软件需求** |  | 14d | 2015-11-19 | 2015-12-09 |  | 2015-11-19 | 2015-12-09 | 14d | 0d |  | 120h | 10,480 | 10,480 |
| 8 | 2.1 | 行为需求分析 |  | 5d | 2015-11-19 | 2015-11-26 | 6 | 2015-11-19 | 2015-11-26 | 5d | 0d | 分析人员 | 40h | 3,200 | 3,200 |
| 9 | 2.2 | 起草初步的软件规范 |  | 3d | 2015-11-26 | 2015-12-01 | 8 | 2015-11-26 | 2015-12-01 | 3d | 0d | 分析人员 | 24h | 1,920 | 1,920 |
| 10 | 2.3 | 制定初步预算 |  | 2d | 2015-12-01 | 2015-12-03 | 9 | 2015-12-01 | 2015-12-03 | 2d | 0d | 项目经理 | 16h | 1,600 | 1,600 |
| 11 | 2.4 | 工作组共同审阅软件规范/预算 |  | 4h | 2015-12-03 | 2015-12-03 | 10 | 2015-12-03 | 2015-12-03 | 4h | 0d | 项目经理; 分析人员 | 8h | 720 | 720 |
| 12 | 2.5 | 根据反馈修改软件规范 |  | 1d | 2015-12-04 | 2015-12-04 | 11 | 2015-12-04 | 2015-12-04 | 1d | 0d | 分析人员 | 8h | 640 | 640 |
| 13 | 2.6 | 制定交付期限 |  | 1d | 2015-12-07 | 2015-12-07 | 12 | 2015-12-07 | 2015-12-07 | 1d | 0d | 项目经理 | 8h | 800 | 800 |
| 14 | 2.7 | 获得开展后续工作的批准(概念、期限和预算) |  | 4h | 2015-12-08 | 2015-12-08 | 13 | 2015-12-08 | 2015-12-08 | 4h | 0d | 管理人员; 项目经理 | 8h | 800 | 800 |
| 15 | 2.8 | 获得所需资源 |  | 1d | 2015-12-08 | 2015-12-09 | 14 | 2015-12-08 | 2015-12-09 | 1d | 0d | 项目经理 | 8h | 800 | 800 |
| 16 | 2.9 | 完成分析工作 | milestone | 0d | 2015-12-09 | 2015-12-09 | 15 | 2015-12-09 | 2015-12-09 | 0d | 0d |  |  |  |  |
| 17 | 3 | **设计** |  | 14.5d | 2015-12-09 | 2015-12-29 |  | 2015-12-09 | 2015-12-29 | 14.5d | 0d |  | 120h | 10,240 | 10,240 |
| 18 | 3.1 | 审阅初步的软件规范 |  | 2d | 2015-12-09 | 2015-12-11 | 16 | 2015-12-09 | 2015-12-11 | 2d | 0d | 分析人员 | 16h | 1,280 | 1,280 |
| 19 | 3.2 | 制定功能规范 |  | 5d | 2015-12-11 | 2015-12-18 | 18 | 2015-12-11 | 2015-12-18 | 5d | 0d | 分析人员 | 40h | 3,200 | 3,200 |
| 20 | 3.3 | 根据功能规范开发原型 |  | 4d | 2015-12-18 | 2015-12-24 | 19 | 2015-12-18 | 2015-12-24 | 4d | 0d | 分析人员 | 32h | 2,560 | 2,560 |
| 21 | 3.4 | 审阅功能规范 |  | 2d | 2015-12-24 | 2015-12-28 | 20 | 2015-12-24 | 2015-12-28 | 2d | 0d | 管理人员 | 16h | 1,600 | 1,600 |
| 22 | 3.5 | 根据反馈修改功能规范 |  | 1d | 2015-12-28 | 2015-12-29 | 21 | 2015-12-28 | 2015-12-29 | 1d | 0d | 管理人员 | 8h | 800 | 800 |
| 23 | 3.6 | 获得开展后续工作的批准 |  | 4h | 2015-12-29 | 2015-12-29 | 22 | 2015-12-29 | 2015-12-29 | 4h | 0d | 管理人员; 项目经理 | 8h | 800 | 800 |
| 24 | 3.7 | 完成设计工作 | milestone | 0d | 2015-12-29 | 2015-12-29 | 23 | 2015-12-29 | 2015-12-29 | 0d | 0d |  |  |  |  |

| ID | WBS | Task | Type | Duration | Start | Finish | Predecessors | Baseline start | Baseline finish | Baseline duration | Total slack | Free slack | Resources | Work | Cost | Baseline cost |
| --- | --- | --- | --- | --- | --- | --- | --- | --- | --- | --- | --- | --- | --- | --- | --- | --- |
| 25 | 4 | **开发** |  | 21.75d | 2015-12-30 | 2016-01-28 |  | 2015-12-30 | 2016-01-28 | 21.75d | 0d |  |  | 264h | 21,120 | 21,120 |
| 26 | 4.1 | 审阅功能规范 |  | 1d | 2015-12-30 | 2015-12-30 | 24 | 2015-12-30 | 2015-12-30 | 1d | 0d |  | 开发人员 | 8h | 640 | 640 |
| 27 | 4.2 | 确定模块化/分层设计参数 |  | 1d | 2015-12-31 | 2015-12-31 | 26 | 2015-12-31 | 2015-12-31 | 1d | 0d |  | 开发人员 | 8h | 640 | 640 |
| 28 | 4.3 | 分派任务给开发人员 |  | 1d | 2016-01-01 | 2016-01-01 | 27 | 2016-01-01 | 2016-01-01 | 1d | 0d |  | 开发人员 | 8h | 640 | 640 |
| 29 | 4.4 | 编写代码 |  | 15d | 2016-01-04 | 2016-01-22 | 28 | 2016-01-04 | 2016-01-22 | 15d | 0d |  | 开发人员 | 120h | 9,600 | 9,600 |
| 30 | 4.5 | 开发人员测试(初步调试) |  | 15d | 2016-01-07 | 2016-01-28 | 29FS-7.5% | 2016-01-07 | 2016-01-28 | 15d | 0d |  | 开发人员 | 120h | 9,600 | 9,600 |
| 31 | 4.6 | 完成开发工作 | milestone | 0d | 2016-01-28 | 2016-01-28 | 30 | 2016-01-28 | 2016-01-28 | 0d | 0d |  |  |  |  |  |
| 32 | 5 | **测试** |  | 48.75d | 2015-12-30 | 2016-03-07 |  | 2015-12-30 | 2016-03-07 | 48.75d | 15d |  |  | 280h | 19,600 | 19,600 |
| 33 | 5.1 | 根据产品规范制定单元测试计划 |  | 4d | 2015-12-30 | 2016-01-04 | 24 | 2015-12-30 | 2016-01-04 | 4d | 17.75d |  | 测试人员 | 32h | 2,240 | 2,240 |
| 34 | 5.2 | 根据产品规范制定整体测试计划 |  | 4d | 2015-12-30 | 2016-01-04 | 24 | 2015-12-30 | 2016-01-04 | 4d | 59.75d |  | 测试人员 | 32h | 2,240 | 2,240 |
| 35 | 5.3 | **单元测试** |  | 15d | 2016-01-28 | 2016-02-18 |  | 2016-01-28 | 2016-02-18 | 15d | 0d |  |  | 120h | 8,400 | 8,400 |
| 36 | 5.3.1 | 审阅模块化代码 |  | 5d | 2016-01-28 | 2016-02-04 | 33, 31 | 2016-01-28 | 2016-02-04 | 5d | 0d |  | 测试人员 | 40h | 2,800 | 2,800 |
| 37 | 5.3.2 | 测试组件模块是否符合产品规范 |  | 2d | 2016-02-04 | 2016-02-08 | 31, 36 | 2016-02-04 | 2016-02-08 | 2d | 0d |  | 测试人员 | 16h | 1,120 | 1,120 |
| 38 | 5.3.3 | 找出不符合产品规范的异常情况 |  | 3d | 2016-02-08 | 2016-02-11 | 37 | 2016-02-08 | 2016-02-11 | 3d | 0d |  | 测试人员 | 24h | 1,680 | 1,680 |
| 39 | 5.3.4 | 修改代码 |  | 3d | 2016-02-11 | 2016-02-16 | 38 | 2016-02-11 | 2016-02-16 | 3d | 0d |  | 测试人员 | 24h | 1,680 | 1,680 |
| 40 | 5.3.5 | 重新测试经过修改的代码 |  | 2d | 2016-02-16 | 2016-02-18 | 39 | 2016-02-16 | 2016-02-18 | 2d | 0d |  | 测试人员 | 16h | 1,120 | 1,120 |
| 41 | 5.3.6 | 完成单元测试 | milestone | 0d | 2016-02-18 | 2016-02-18 | 40 | 2016-02-18 | 2016-02-18 | 0d | 0d |  |  |  |  |  |
| 42 | 5.4 | **整体测试** |  | 12d | 2016-02-18 | 2016-03-07 |  | 2016-02-18 | 2016-03-07 | 12d | 0d |  |  | 96h | 6,720 | 6,720 |
| 43 | 5.4.1 | 测试模块集成情况 |  | 5d | 2016-02-18 | 2016-02-25 | 41 | 2016-02-18 | 2016-02-25 | 5d | 0d |  | 测试人员 | 40h | 2,800 | 2,800 |
| 44 | 5.4.2 | 找出不符合规范的异常情况 |  | 2d | 2016-02-25 | 2016-02-29 | 43 | 2016-02-25 | 2016-02-29 | 2d | 0d |  | 测试人员 | 16h | 1,120 | 1,120 |
| 45 | 5.4.3 | 修改代码 |  | 3d | 2016-02-29 | 2016-03-03 | 44 | 2016-02-29 | 2016-03-03 | 3d | 0d |  | 测试人员 | 24h | 1,680 | 1,680 |
| 46 | 5.4.4 | 重新测试经过修改的代码 |  | 2d | 2016-03-03 | 2016-03-07 | 45 | 2016-03-03 | 2016-03-07 | 2d | 0d |  | 测试人员 | 16h | 1,120 | 1,120 |
| 47 | 5.4.5 | 完成整体测试 | milestone | 0d | 2016-03-07 | 2016-03-07 | 46 | 2016-03-07 | 2016-03-07 | 0d | 0d |  |  |  |  |  |
| 48 | 6 | **培训** |  | 45.75d | 2015-12-30 | 2016-03-02 |  | 2015-12-30 | 2016-03-02 | 45.75d | 3d |  |  | 256h | 20,480 | 20,480 |
| 49 | 6.1 | 制定针对最终用户的培训规范 |  | 3d | 2015-12-30 | 2016-01-01 | 24 | 2015-12-30 | 2016-01-01 | 3d | 21.75d | 18.75d | 讲师 | 24h | 1,920 | 1,920 |
| 50 | 6.2 | 制定针对产品技术支持人员的培训规范 |  | 3d | 2015-12-30 | 2016-01-01 | 24 | 2015-12-30 | 2016-01-01 | 3d | 21.75d | 18.75d | 讲师 | 24h | 1,920 | 1,920 |
| 51 | 6.3 | 确定培训方法(基于计算机的培训、教室授课等) |  | 2d | 2015-12-30 | 2015-12-31 | 24 | 2015-12-30 | 2015-12-31 | 2d | 22.75d | 19.75d | 讲师 | 16h | 1,280 | 1,280 |
| 52 | 6.4 | 编写培训材料 |  | 3w | 2016-01-28 | 2016-02-18 | 49, 31, 50, 51 | 2016-01-28 | 2016-02-18 | 3w | 3d | 0d | 讲师 | 120h | 9,600 | 9,600 |
| 53 | 6.5 | 研究培训材料的可用性 |  | 4d | 2016-02-18 | 2016-02-24 | 52 | 2016-02-18 | 2016-02-24 | 4d | 3d | 0d | 讲师 | 32h | 2,560 | 2,560 |
| 54 | 6.6 | 对培训材料进行最后处理 |  | 3d | 2016-02-24 | 2016-02-29 | 53 | 2016-02-24 | 2016-02-29 | 3d | 3d | 0d | 讲师 | 24h | 1,920 | 1,920 |
| 55 | 6.7 | 制定培训机制 |  | 2d | 2016-02-29 | 2016-03-02 | 54 | 2016-02-29 | 2016-03-02 | 2d | 3d | 0d | 讲师 | 16h | 1,280 | 1,280 |
| 56 | 6.8 | 完成培训材料 | milestone | 0d | 2016-03-02 | 2016-03-02 | 55 | 2016-03-02 | 2016-03-02 | 0d | 3d |  |  |  |  |  |

| ID | WBS | Task | Type | Duration | Start | Finish | Predecessors | Baseline start | Baseline finish | Baseline duration | Total slack | Free slack | Resources | Work | Cost | Baseline cost |
| --- | --- | --- | --- | --- | --- | --- | --- | --- | --- | --- | --- | --- | --- | --- | --- | --- |
| 57 | 7 | **文档** |  | 30.5d | 2015-12-30 | 2016-02-10 |  | 2015-12-30 | 2016-02-10 | 30.5d | 18.25d |  |  | 336h | 20,160 | 20,160 |
| 58 | 7.1 | 制定“帮助”规范 |  | 1d | 2015-12-30 | 2015-12-30 | 24 | 2015-12-30 | 2015-12-30 | 1d | 27.75d | 9.5d | 技术联络人员 | 8h | 480 | 480 |
| 59 | 7.2 | 开发“帮助”系统 |  | 3w | 2016-01-13 | 2016-02-03 | 58, 29FS-5% | 2016-01-13 | 2016-02-03 | 3w | 18.25d | 0d | 技术联络人员 | 120h | 7,200 | 7,200 |
| 60 | 7.3 | 审阅“帮助”文档 |  | 3d | 2016-02-03 | 2016-02-08 | 59 | 2016-02-03 | 2016-02-08 | 3d | 18.25d | 0d | 技术联络人员 | 24h | 1,440 | 1,440 |
| 61 | 7.4 | 根据反馈修改“帮助”文档 |  | 2d | 2016-02-08 | 2016-02-10 | 60 | 2016-02-08 | 2016-02-10 | 2d | 18.25d | 0d | 技术联络人员 | 16h | 960 | 960 |
| 62 | 7.5 | 制定用户手册规范 |  | 2d | 2015-12-30 | 2015-12-31 | 24 | 2015-12-30 | 2015-12-31 | 2d | 27.75d | 8.5d | 技术联络人员 | 16h | 960 | 960 |
| 63 | 7.6 | 编写用户手册 |  | 3w | 2016-01-13 | 2016-02-03 | 62, 29FS-5% | 2016-01-13 | 2016-02-03 | 3w | 19.25d | 0d | 技术联络人员 | 120h | 7,200 | 7,200 |
| 64 | 7.7 | 审阅所有的用户文档 |  | 2d | 2016-02-03 | 2016-02-05 | 63 | 2016-02-03 | 2016-02-05 | 2d | 19.25d | 0d | 技术联络人员 | 16h | 960 | 960 |
| 65 | 7.8 | 根据反馈修改用户文档 |  | 2d | 2016-02-05 | 2016-02-09 | 64 | 2016-02-05 | 2016-02-09 | 2d | 19.25d | 1d | 技术联络人员 | 16h | 960 | 960 |
| 66 | 7.9 | 完成文档 | milestone | 0d | 2016-02-10 | 2016-02-10 | 65, 61 | 2016-02-10 | 2016-02-10 | 0d | 18.25d |  |  |  |  |  |
| 67 | 8 | **试生产** |  | 70.25d | 2015-12-09 | 2016-03-16 |  | 2015-12-09 | 2016-03-16 | 70.25d | 0d |  |  | 64h | 4,160 | 4,160 |
| 68 | 8.1 | 确定测试群体 |  | 1d | 2015-12-09 | 2015-12-10 | 16 | 2015-12-09 | 2015-12-10 | 1d | 61.25d | 0d | 项目经理 | 8h | 800 | 800 |
| 69 | 8.2 | 确定软件分发机制 |  | 1d | 2015-12-10 | 2015-12-11 | 68 | 2015-12-10 | 2015-12-11 | 1d | 61.25d |  |  |  |  |  |
| 70 | 8.3 | 安装/部署软件 |  | 1d | 2016-03-07 | 2016-03-08 | 47, 69, 66, 56 | 2016-03-07 | 2016-03-08 | 1d | 0d |  | 部署小组 | 8h | 480 | 480 |
| 71 | 8.4 | 获得用户反馈 |  | 1w | 2016-03-08 | 2016-03-15 | 70 | 2016-03-08 | 2016-03-15 | 1w | 0d |  | 部署小组 | 40h | 2,400 | 2,400 |
| 72 | 8.5 | 评估测试信息 |  | 1d | 2016-03-15 | 2016-03-16 | 71 | 2016-03-15 | 2016-03-16 | 1d | 0d |  | 部署小组 | 8h | 480 | 480 |
| 73 | 8.6 | 完成试生产工作 | milestone | 0d | 2016-03-16 | 2016-03-16 | 72 | 2016-03-16 | 2016-03-16 | 0d | 0d |  |  |  |  |  |
| 74 | 9 | **部署** |  | 5d | 2016-03-16 | 2016-03-23 |  | 2016-03-16 | 2016-03-23 | 5d | 0d |  |  | 40h | 2,400 | 2,400 |
| 75 | 9.1 | 确定最终部署策略 |  | 1d | 2016-03-16 | 2016-03-17 | 73 | 2016-03-16 | 2016-03-17 | 1d | 0d |  | 部署小组 | 8h | 480 | 480 |
| 76 | 9.2 | 确定部署方法 |  | 1d | 2016-03-17 | 2016-03-18 | 75 | 2016-03-17 | 2016-03-18 | 1d | 0d |  | 部署小组 | 8h | 480 | 480 |
| 77 | 9.3 | 获得部署所需资源 |  | 1d | 2016-03-18 | 2016-03-21 | 76 | 2016-03-18 | 2016-03-21 | 1d | 0d |  | 部署小组 | 8h | 480 | 480 |
| 78 | 9.4 | 培训技术支持人员 |  | 1d | 2016-03-21 | 2016-03-22 | 77 | 2016-03-21 | 2016-03-22 | 1d | 0d |  | 部署小组 | 8h | 480 | 480 |
| 79 | 9.5 | 部署软件 |  | 1d | 2016-03-22 | 2016-03-23 | 78 | 2016-03-22 | 2016-03-23 | 1d | 0d |  | 部署小组 | 8h | 480 | 480 |
| 80 | 9.6 | 完成部署工作 | milestone | 0d | 2016-03-23 | 2016-03-23 | 79 | 2016-03-23 | 2016-03-23 | 0d | 0d |  |  |  |  |  |

| ID | WBS | Task | Type | Duration | Start | Finish | Predecessors | Baseline start | Baseline finish | Baseline duration | Total slack | Resources | Work | Cost | Baseline cost |
| --- | --- | --- | --- | --- | --- | --- | --- | --- | --- | --- | --- | --- | --- | --- | --- |
| 81 | 10 | **实施工作结束后的回顾** |  | 3d | 2016-03-23 | 2016-03-28 |  | 2016-03-23 | 2016-03-28 | 3d | 0d |  | 24h | 2,400 | 2,400 |
| 82 | 10.1 | 将经验教训记录存档 |  | 1d | 2016-03-23 | 2016-03-24 | 80 | 2016-03-23 | 2016-03-24 | 1d | 0d | 项目经理 | 8h | 800 | 800 |
| 83 | 10.2 | 分发给工作组成员 |  | 1d | 2016-03-24 | 2016-03-25 | 82 | 2016-03-24 | 2016-03-25 | 1d | 0d | 项目经理 | 8h | 800 | 800 |
| 84 | 10.3 | 建立软件维护小组 |  | 1d | 2016-03-25 | 2016-03-28 | 83 | 2016-03-25 | 2016-03-28 | 1d | 0d | 项目经理 | 8h | 800 | 800 |
| 85 | 10.4 | 完成回顾 | milestone | 0d | 2016-03-28 | 2016-03-28 | 84 | 2016-03-28 | 2016-03-28 | 0d | 0d |  |  |  |  |
| 86 | 11 | 软件开发模板结束 | milestone | 0d | 2016-03-28 | 2016-03-28 | 85 | 2016-03-28 | 2016-03-28 | 0d | 0d |  |  |  |  |
